# planejamento_proj

How a schedule from MS Project changed from version to version. A marks actual dates.

## Version 1 (saved 2019-03-18)

Note of the change: Primeiro COmmit

| ID | WBS | Task | Duration | Start | Finish | Predecessors | Complete | Total float | Constraint |
| --- | --- | --- | --- | --- | --- | --- | --- | --- | --- |
| 1 | 1 | **Iniciação** | 3.4d | 2019-02-05 09:00 A | 2019-02-08 11:00 A |  | 100% |  |  |
| 2 | 1.1 | **Definição de escopo** | 0.4d | 2019-02-08 09:00 A | 2019-02-08 11:00 A |  | 100% |  |  |
| 3 |  | numero de fases(11) | 0.2d | 2019-02-08 09:00 A | 2019-02-08 10:00 A |  | 100% |  | start no earlier than 2019-02-08 09:00 |
| 4 |  | Mecanicas | 0.4d | 2019-02-08 09:00 A | 2019-02-08 11:00 A |  | 100% |  |  |
| 5 |  | Objetivos | 1.6d | 2019-02-05 09:00 A | 2019-02-06 13:00 A |  | 100% |  |  |
| 6 | 2 | **Planejamento** | 35.6d? | 2019-02-05 09:00 A | 2019-03-22 15:00 |  | 51% | 70d |  |
| 7 |  | Mecanicas | 0.4d? | 2019-02-05 09:00 A | 2019-02-05 11:00 A |  | 100% |  | finish no earlier than 2019-02-13 15:00 |
| 8 |  | Tela de Opções | 0.2d? | 2019-03-01 09:00 A | 2019-03-01 10:00 A |  | 100% |  | finish no earlier than 2019-03-06 15:00 |
| 9 |  | Menu de Titulo | 0.2d? | 2019-03-05 09:00 A | 2019-03-05 10:00 A |  | 100% |  | finish no earlier than 2019-03-07 15:00 |
| 10 |  | planejamento do Game Loop | 0.25d? | 2019-03-05 09:00 A | 2019-03-05 10:15 A |  | 100% |  | finish no earlier than 2019-03-13 15:00 |
| 11 |  | planejamento da Área 1 | 1d? | 2019-03-22 09:00 | 2019-03-22 15:00 |  |  | 70d | start no earlier than 2019-03-22 09:00 |
| 12 | 3 | **Desenvolvimento** | 80.6d? | 2019-02-15 09:00 A | 2019-06-05 15:00 |  | 19% | 10d |  |
| 13 | 3.1 | **Mecanica Central** | 10.2d? | 2019-02-15 09:00 A | 2019-03-01 10:00 A | 7 | 100% |  |  |
| 14 |  | Movimentação | 1.6d? | 2019-02-15 09:00 A | 2019-02-18 13:00 A |  | 100% |  | finish no earlier than 2019-02-20 15:00 |
| 15 |  | Pulo | 0.8d? | 2019-02-21 09:00 A | 2019-02-21 14:00 A | 14 | 100% |  | finish no earlier than 2019-02-22 15:00 |
| 16 |  | Magic Regen | 0.4d? | 2019-02-26 09:00 A | 2019-02-26 11:00 A | 15 | 100% |  | finish no earlier than 2019-02-25 15:00 |
| 17 |  | Magic Attack | 0.4d? | 2019-02-26 09:00 A | 2019-02-26 11:00 A | 15 | 100% |  |  |
| 18 |  | Magic Down Arrow | 0.25d? | 2019-02-27 09:00 A | 2019-02-27 10:15 A | 15 | 100% |  | start no earlier than 2019-02-27 09:00 |
| 19 |  | Dash Movement | 0.25d? | 2019-02-28 09:00 A | 2019-02-28 10:15 A | 15 | 100% |  |  |
| 20 |  | Double Jump | 0.2d? | 2019-03-01 09:00 A | 2019-03-01 10:00 A | 15 | 100% |  | start no earlier than 2019-03-01 09:00 |
| 21 |  | espadas multi coloridas | 0.2d? | 2019-03-01 09:00 A | 2019-03-01 10:00 A | 15 | 100% |  | start no earlier than 2019-02-01 09:00 |
| 22 | 3.2 | **Menu Inicial** | 4.15d? | 2019-03-04 09:00 A | 2019-03-08 09:45 A | 9 | 100% |  |  |
| 23 |  | Menu de Introdução ao jogo | 0.1d? | 2019-03-04 09:00 A | 2019-03-04 09:30 A |  | 100% |  | start no earlier than 2019-03-04 09:00 |
| 24 |  | Opções no titulo | 0.2d? | 2019-03-04 09:00 A | 2019-03-04 10:00 A |  | 100% |  | start no earlier than 2019-03-04 09:00 |
| 25 |  | Aparencia transitoria do menu novo jogo carregar deletar | 0.2d? | 2019-03-05 09:00 A | 2019-03-05 10:00 A |  | 100% |  | start no earlier than 2019-03-05 09:00 |
| 26 |  | aparencia transitoria do menu de idiomas | 0.2d? | 2019-03-07 09:00 A | 2019-03-07 10:00 A |  | 100% |  | start no earlier than 2019-03-07 09:00 |
| 27 |  | aparencia transitoria do menu de creditos | 0.15d? | 2019-03-08 09:00 A | 2019-03-08 09:45 A |  | 100% |  | start no earlier than 2019-03-08 09:00 |
| 28 |  | funcionalidades do menu iniciar/carregar/deletar | 0.4d? | 2019-03-06 09:00 A | 2019-03-06 11:00 A | 25 | 100% |  | start no earlier than 2019-03-06 09:00 |
| 29 |  | funcionalidades do menu de opções | 0.15d? | 2019-03-08 09:00 A | 2019-03-08 09:45 A |  | 100% |  | start no earlier than 2019-03-08 09:00 |
| 30 |  | funcionalidades do menu de idiomas | 0.15d? | 2019-03-08 09:00 A | 2019-03-08 09:45 A | 26 | 100% |  | start no earlier than 2019-02-08 09:00 |
| 31 |  | funcionalidades do menu de creditos | 0.15d? | 2019-03-08 09:00 A | 2019-03-08 09:45 A | 27 | 100% |  | start no earlier than 2019-02-08 09:00 |
| 32 | 3.3 | **Gerenciamento de dados do jogo(Game Loop)** | 7d? | 2019-03-06 09:00 A | 2019-03-13 11:00 A |  | 100% |  |  |
| 33 |  | Keyvars | 0.55d? | 2019-03-06 09:00 A | 2019-03-06 12:45 A |  | 100% |  | start no earlier than 2019-03-06 09:00 |
| 34 |  | SceneLoader | 0.2d? | 2019-03-07 09:00 A | 2019-03-07 10:00 A |  | 100% |  | finish no earlier than 2019-03-08 15:00 |
| 35 |  | changeSceneInLoader | 0.35d? | 2019-03-07 09:00 A | 2019-03-07 10:45 A |  | 100% |  | finish no earlier than 2019-03-08 15:00 |
| 36 |  | sistema de check point | 0.2d? | 2019-03-08 09:00 A | 2019-03-08 10:00 A |  | 100% |  | finish no earlier than 2019-03-09 15:00 |
| 37 |  | sistema de inimigos se recuperando ao usar check point | 0.2d? | 2019-03-11 09:00 A | 2019-03-11 10:00 A |  | 100% |  | finish no earlier than 2019-03-11 15:00 |
| 38 |  | lockCameraInScene | 0.1d? | 2019-03-11 09:00 A | 2019-03-11 09:30 A |  | 100% |  | start no earlier than 2019-03-11 09:00 |
| 39 |  | ChangeSceneInGame | 0.3d? | 2019-03-12 09:00 A | 2019-03-12 10:30 A |  | 100% |  | start no earlier than 2019-03-12 09:00 |
| 40 |  | implementação dos dados do inventario | 0.4d? | 2019-03-13 09:00 A | 2019-03-13 11:00 A |  | 100% |  | start no earlier than 2019-03-13 09:00 |
| 41 | 3.4 | **Menu de Pause** | 5d? | 2019-03-14 09:00 A | 2019-03-20 15:00 |  | 60% | 65d |  |
| 42 |  | aparencia transitoria do menu de opções de pause | 1d? | 2019-03-14 09:00 A | 2019-03-14 15:00 A |  | 100% |  | start no earlier than 2019-03-14 09:00 |
| 43 |  | aparencia transitoria do menu de emblemas | 1d? | 2019-03-14 09:00 A | 2019-03-14 15:00 A |  | 100% |  | start no earlier than 2019-03-14 09:00 |
| 44 |  | aparencia transitoria do espaço do mapa | 1d? | 2019-03-14 09:00 A | 2019-03-14 15:00 A |  | 100% |  | start no earlier than 2019-03-14 09:00 |
| 45 |  | aparencia transitoria do menu de updates | 1d? | 2019-03-14 09:00 A | 2019-03-14 15:00 A |  | 100% |  | start no earlier than 2019-03-14 09:00 |
| 46 |  | aparencia transitoria do menu de hexagonos e pentagonos | 1d? | 2019-03-14 09:00 A | 2019-03-14 15:00 A |  | 100% |  | start no earlier than 2019-03-14 09:00 |
| 47 |  | funcionalidades do menu de opções de pause | 1d? | 2019-03-15 09:00 A | 2019-03-15 15:00 A | 42 | 100% |  | start no earlier than 2019-03-15 09:00 |
| 48 |  | funcionalidades do menu de updates | 2d? | 2019-03-15 09:00 A | 2019-03-18 15:00 | 45 | 50% | 67d | finish no earlier than 2019-03-18 15:00 |
| 49 |  | funcionalidades do menu de emblemas | 1d? | 2019-03-19 09:00 | 2019-03-19 15:00 | 43 |  | 66d | start no earlier than 2019-03-19 09:00 |
| 50 |  | funcionalidades do menu de hexagonos e pentagonos | 2d? | 2019-03-19 09:00 | 2019-03-20 15:00 | 46 |  | 65d | finish no earlier than 2019-03-20 15:00 |
| 51 |  | funcionalidades gerais do menu de pause | 4d? | 2019-03-15 09:00 A | 2019-03-20 15:00 |  | 50% | 65d | finish no earlier than 2019-03-20 15:00 |
| 52 |  | Área 1 | 6d? | 2019-03-20 09:00 | 2019-03-27 15:00 |  |  | 60d | finish no earlier than 2019-03-27 15:00 |
| 53 |  | Área 2 | 6d? | 2019-03-27 09:00 | 2019-04-03 15:00 |  |  | 55d | finish no earlier than 2019-04-03 15:00 |
| 54 |  | Área 3 | 6d? | 2019-04-03 09:00 | 2019-04-10 15:00 |  |  | 50d | finish no earlier than 2019-04-10 15:00 |
| 55 |  | Área 4 | 6d? | 2019-04-10 09:00 | 2019-04-17 15:00 |  |  | 45d | finish no earlier than 2019-04-17 15:00 |
| 56 |  | Área 5 | 6d? | 2019-04-17 09:00 | 2019-04-24 15:00 |  |  | 40d | finish no earlier than 2019-04-24 15:00 |
| 57 |  | Área 6 | 6d? | 2019-04-24 09:00 | 2019-05-01 15:00 |  |  | 35d | finish no earlier than 2019-05-01 15:00 |
| 58 |  | Área 7 | 6d? | 2019-05-01 09:00 | 2019-05-08 15:00 |  |  | 30d | finish no earlier than 2019-05-08 15:00 |
| 59 |  | Área 8 | 6d? | 2019-05-08 09:00 | 2019-05-15 15:00 |  |  | 25d | finish no earlier than 2019-05-15 15:00 |
| 60 |  | Área 9 | 6d? | 2019-05-15 09:00 | 2019-05-22 15:00 |  |  | 20d | finish no earlier than 2019-05-22 15:00 |
| 61 |  | Área 10 | 6d? | 2019-05-22 09:00 | 2019-05-29 15:00 |  |  | 15d | finish no earlier than 2019-05-29 15:00 |
| 62 |  | Área 11 | 6d? | 2019-05-29 09:00 | 2019-06-05 15:00 |  |  | 10d | finish no earlier than 2019-06-05 15:00 |
| 63 | 4 | **Testes/Correções/Balanceamento** | 51d? | 2019-04-10 09:00 | 2019-06-19 15:00 |  |  | 7d |  |
| 64 |  | Testes com conhecidos | 16d? | 2019-04-10 09:00 | 2019-05-01 15:00 |  |  | 42d | finish no earlier than 2019-05-01 15:00 |
| 65 |  | Correções | 6d? | 2019-06-05 09:00 | 2019-06-12 15:00 |  |  | 12d | finish no earlier than 2019-06-12 15:00 |
| 66 |  | Balanceamento | 6d? | 2019-06-12 09:00 | 2019-06-19 15:00 |  |  | 7d | finish no earlier than 2019-06-19 15:00 |
| 67 | 5 | **Publicação/Monetização/Polimento** | 8d? | 2019-06-19 09:00 | 2019-06-28 15:00 | 12 |  | 0d |  |
| 68 |  | Monetização | 4d? | 2019-06-19 09:00 | 2019-06-24 15:00 |  |  | 4d | finish no earlier than 2019-06-24 15:00 |
| 69 |  | Polimento | 7d? | 2019-06-19 09:00 | 2019-06-27 15:00 |  |  | 1d | finish no earlier than 2019-06-27 15:00 |
| 70 |  | Publicação | 4d? | 2019-06-25 09:00 | 2019-06-28 15:00 |  |  | 0d | finish no earlier than 2019-06-28 15:00 |

## Version 2 (saved 2019-03-20)

Note of the change: terminado menu de pause

Last finish stays 2019-06-28. Complete tasks 38 → 43.

Added:

| ID | Task | Duration | Start | Finish | Constraint |
| --- | --- | --- | --- | --- | --- |
| 6 | Pesquisa de Mercado | 0.5d? | 2019-03-15 12:30 A | 2019-03-15 15:00 A | start no earlier than 2019-03-15 12:30 |

Changed:

| ID | Task | Start | Finish | Duration | Complete | Total float | Other |
| --- | --- | --- | --- | --- | --- | --- | --- |
| 1 | **Iniciação** |  | 2019-02-08 11:00 A → 2019-03-15 15:00 A (+35d) | 3.4d → 29d? |  |  |  |
| 7 | **Planejamento** |  |  | 35.6d? → 35.4d? |  |  |  |
| 13 | **Desenvolvimento** |  |  | 80.6d? → 80.4d? | 19% → 28% |  |  |
| 33 | **Gerenciamento de dados do jogo(Game Loop)** |  |  | 7d? → 5.4d? |  |  |  |
| 42 | **Menu de Pause** |  | 2019-03-20 15:00 A | 5d? → 6.4d? | 60% → 100% | 65d → none |  |
| 48 | funcionalidades do menu de opções de pause |  | 2019-03-15 15:00 A → 2019-03-15 11:30 A | 1d? → 0.5d? |  |  |  |
| 49 | funcionalidades do menu de updates |  | 2019-03-18 15:00 → 2019-03-18 11:30 A | 2d? → 1d? | 50% → 100% | 67d → none |  |
| 50 | funcionalidades do menu de emblemas | 2019-03-19 09:00 → 2019-03-18 09:00 A (-1d) | 2019-03-19 15:00 → 2019-03-19 23:00 A | 1d? → 3.4d? | 0% → 100% | 66d → none | constraint start no earlier than 2019-03-19 09:00 → start no earlier than 2019-03-18 09:00 |
| 51 | funcionalidades do menu de hexagonos e pentagonos | 2019-03-19 09:00 → 2019-03-20 09:00 A (+1d) | 2019-03-20 15:00 → 2019-03-20 11:30 A | 2d? → 0.5d? | 0% → 100% | 65d → none | constraint finish no earlier than 2019-03-20 15:00 → start no earlier than 2019-03-20 09:00 |
| 52 | funcionalidades gerais do menu de pause |  | 2019-03-20 15:00 A | 4d? → 4.9d? | 50% → 100% | 65d → none | constraint finish no earlier than 2019-03-20 15:00 → none |
| 53 | Área 1 | 2019-03-20 09:00 → 2019-03-21 09:00 (+1d) |  | 6d? → 5d? |  |  |  |
| 54 | Área 2 | 2019-03-27 09:00 → 2019-04-03 09:00 (+7d) |  | 6d? → 1d? |  |  | constraint finish no earlier than 2019-04-03 15:00 → start no earlier than 2019-04-03 09:00 |

## Version 3 (saved 2019-03-27)

Note of the change: implementado area descida para as profundezas inimigo acelerador investidor circulador zigzag

Last finish 2019-06-28 → 2019-07-09 (+11d). Complete tasks 43 → 61.

Added:

| ID | Task | Duration | Start | Finish | Predecessors | Constraint |
| --- | --- | --- | --- | --- | --- | --- |
| 13 | Tutorial | 1d? | 2019-03-21 09:00 A | 2019-03-21 15:00 A |  | finish no earlier than 2019-03-21 15:00 |
| 14 | escolha do tema | 7d? | 2019-03-21 09:00 A | 2019-03-29 15:00 A |  | finish no earlier than 2019-03-29 15:00 |
| 15 | NPCs | 7d? | 2019-03-21 09:00 A | 2019-03-29 15:00 A |  | finish no earlier than 2019-03-29 15:00 |
| 16 | Itens Disponiveis | 0.5d? | 2019-03-22 12:30 A | 2019-03-22 15:00 A |  | start no earlier than 2019-03-22 12:30 |
| 17 | Inimigos | 0.5d? | 2019-03-22 12:30 A | 2019-03-22 15:00 A |  | start no earlier than 2019-03-22 12:30 |
| 18 | Chefe | 7d? | 2019-03-21 09:00 A | 2019-03-29 15:00 A |  | finish no earlier than 2019-03-29 15:00 |
| 19 | Caminhos bloqueados por habilidades | 7d? | 2019-03-21 09:00 A | 2019-03-29 15:00 A |  | finish no earlier than 2019-03-29 15:00 |
| 61 | implementação do tutorial | 2.5d? | 2019-03-20 09:00 A | 2019-03-22 11:30 A |  | finish no earlier than 2019-03-21 15:00 |
| 62 | **implementação dos Inimigos** | 12.5d | 2019-03-22 09:00 A | 2019-04-03 15:00 |  |  |
| 63 | O que Acelera | 1.5d? | 2019-03-26 12:30 A | 2019-03-26 23:00 A |  | start no earlier than 2019-03-26 12:30 |
| 64 | Investidor | 1d? | 2019-03-26 18:00 A | 2019-03-26 23:00 A |  | start no earlier than 2019-03-26 18:00 |
| 65 | Estocador | 9d? | 2019-03-22 09:00 | 2019-03-29 11:30 |  |  |
| 66 | pulador | 1d? | 2019-03-26 18:00 A | 2019-03-26 23:00 A |  | start no earlier than 2019-03-26 18:00 |
| 67 | circulador | 0.5d? | 2019-03-27 09:00 A | 2019-03-27 11:30 A |  | start no earlier than 2019-03-27 09:00 |
| 68 | atirador | 9d? | 2019-03-22 09:00 | 2019-03-29 11:30 |  |  |
| 69 | reprodutor | 9d? | 2019-03-22 09:00 | 2019-03-29 11:30 |  |  |
| 70 | fortão | 9d? | 2019-03-22 09:00 | 2019-03-29 11:30 |  |  |
| 71 | defensor | 9d? | 2019-03-22 09:00 | 2019-03-29 11:30 |  |  |
| 72 | voador perseguidor | 9d? | 2019-03-22 09:00 | 2019-03-29 11:30 |  |  |
| 73 | voador zig zag | 1d? | 2019-03-27 09:00 A | 2019-03-27 15:00 A |  | start no earlier than 2019-03-27 09:00 |
| 74 | implementação do chefe | 10d? | 2019-03-23 11:30 | 2019-04-03 15:00 |  | finish no earlier than 2019-04-03 15:00 |
| 75 | posicionamento e implementação de itens | 0.6d? | 2019-03-23 09:00 | 2019-03-23 12:00 |  | start no earlier than 2019-03-23 09:00 |
| 76 | implementação das bareriras por habilidades | 10d? | 2019-03-22 11:00 A | 2019-04-03 15:00 |  | finish no earlier than 2019-04-03 15:00 |
| 77 | criação dos tiles e artes | 1d | 2019-03-21 09:00 A | 2019-03-21 15:00 |  | start no earlier than 2019-03-21 09:00 |
| 78 | **Construção do Cenario** | 13d? | 2019-03-21 12:30 A | 2019-04-03 15:00 |  |  |
| 79 | Area do tutorial | 0.5d? | 2019-03-21 12:30 A | 2019-03-21 15:00 A |  | start no earlier than 2019-03-21 12:30 |
| 80 | Área do primeiro checkPoint | 2d? | 2019-03-21 12:30 A | 2019-03-22 23:00 A |  | start no earlier than 2019-03-21 12:30 |
| 81 | Area do Tyron | 3.2d? | 2019-03-22 19:00 A | 2019-03-25 23:00 A |  | start no earlier than 2019-03-22 19:00 |
| 82 | Primeira Área do subsolo | 2d? | 2019-03-26 09:00 A | 2019-03-26 23:00 A |  | start no earlier than 2019-03-26 09:00 |
| 83 | Area da grande descida | 0.5d? | 2019-03-27 09:00 A | 2019-03-27 11:30 A |  | start no earlier than 2019-03-27 09:00 |
| 84 | Area dos Losangulos Perdidos | 1d? | 2019-03-27 09:00 | 2019-03-27 15:00 |  | start no earlier than 2019-03-27 09:00 |
| 85 | SubArea indice 8 | 1d? | 2019-03-27 09:00 | 2019-03-27 15:00 |  | start no earlier than 2019-03-27 09:00 |
| 86 | Subarea indice22 | 1d? | 2019-03-27 09:00 | 2019-03-27 15:00 |  | start no earlier than 2019-03-27 09:00 |
| 87 | subArea indice 9 | 2d? | 2019-03-27 09:00 | 2019-03-28 15:00 |  | finish no earlier than 2019-03-28 15:00 |
| 88 | subArea indice10 - OCheckPoint Intermediario | 1d? | 2019-03-28 09:00 | 2019-03-28 15:00 |  | start no earlier than 2019-03-28 09:00 |
| 89 | subArea indice 11 - Obstaculos | 1d? | 2019-03-28 09:00 | 2019-03-28 15:00 |  | start no earlier than 2019-03-28 09:00 |
| 90 | subArea indice 12 - Obstaculos continuam | 1d? | 2019-03-29 09:00 | 2019-03-29 15:00 |  | start no earlier than 2019-03-29 09:00 |
| 91 | Sub Area a grande subida | 1d? | 2019-04-01 09:00 | 2019-04-01 15:00 | 89 | finish no earlier than 2019-04-01 15:00 |
| 92 | SubAreas indices 13,14 e 18 | 1d? | 2019-04-01 09:00 | 2019-04-01 15:00 |  | start no earlier than 2019-04-01 09:00 |
| 93 | subArea de indice 24 - acampamento de exilados | 2d? | 2019-04-01 09:00 | 2019-04-02 15:00 |  | finish no earlier than 2019-04-02 15:00 |
| 94 | subAreas indices 16,23 e 20 | 1d? | 2019-04-02 09:00 | 2019-04-02 15:00 |  | start no earlier than 2019-04-02 09:00 |
| 95 | subArea caminho do Chefe e Chefe | 1d? | 2019-04-03 09:00 | 2019-04-03 15:00 |  | start no earlier than 2019-04-03 09:00 |

Changed:

| ID | Task | Start | Finish | Duration | Complete | Total float | Other |
| --- | --- | --- | --- | --- | --- | --- | --- |
| 7 | **Planejamento** |  | 2019-03-22 15:00 → 2019-03-29 15:00 A (+7d) | 35.4d? → 42.5d? | 51% → 100% | 70d → none |  |
| 12 | **planejamento da Área 1** | 2019-03-22 09:00 → 2019-03-21 09:00 A (-1d) | 2019-03-22 15:00 → 2019-03-29 15:00 A (+7d) | 1d? → 10.5d? | 0% → 100% | 70d → none | constraint start no earlier than 2019-03-22 09:00 → none |
| 20 | **Desenvolvimento** |  | 2019-06-05 15:00 → 2019-06-28 15:00 (+23d) | 80.4d? → 99.5d? | 28% → 20% | 10d → 0d |  |
| 49 | **Menu de Pause** |  |  | 6.4d? → 5d? |  |  |  |
| 60 | **Área 1** | 2019-03-21 09:00 → 2019-03-20 09:00 A (-1d) | 2019-03-27 15:00 → 2019-04-03 15:00 (+7d) | 5d? → 14.5d? | 0% → 16% | 60d → 62d | constraint finish no earlier than 2019-03-27 15:00 → none |
| 96 | Área 2 |  | 2019-04-03 15:00 → 2019-04-12 15:00 (+9d) | 1d? → 8d? |  |  | constraint start no earlier than 2019-04-03 09:00 → finish no earlier than 2019-04-12 15:00 |
| 97 | Área 3 | 2019-04-03 09:00 → 2019-04-12 09:00 (+9d) | 2019-04-10 15:00 → 2019-04-24 15:00 (+14d) | 6d? → 9d? |  | 50d → 47d | constraint finish no earlier than 2019-04-10 15:00 → finish no earlier than 2019-04-24 15:00 |
| 98 | Área 4 | 2019-04-10 09:00 → 2019-04-24 09:00 (+14d) | 2019-04-17 15:00 → 2019-05-03 15:00 (+16d) | 6d? → 8d? |  | 45d → 40d | constraint finish no earlier than 2019-04-17 15:00 → finish no earlier than 2019-05-03 15:00 |
| 99 | Área 5 | 2019-04-17 09:00 → 2019-05-03 09:00 (+16d) | 2019-04-24 15:00 → 2019-05-15 15:00 (+21d) | 6d? → 9d? |  | 40d → 32d | constraint finish no earlier than 2019-04-24 15:00 → finish no earlier than 2019-05-15 15:00 |
| 100 | Área 6 | 2019-04-24 09:00 → 2019-05-15 09:00 (+21d) | 2019-05-01 15:00 → 2019-05-24 15:00 (+23d) | 6d? → 8d? |  | 35d → 25d | constraint finish no earlier than 2019-05-01 15:00 → finish no earlier than 2019-05-24 15:00 |
| 101 | Área 7 | 2019-05-01 09:00 → 2019-05-24 09:00 (+23d) | 2019-05-08 15:00 → 2019-05-31 15:00 (+23d) |  |  | 30d → 20d | constraint finish no earlier than 2019-05-08 15:00 → finish no earlier than 2019-05-31 15:00 |
| 102 | Área 8 | 2019-05-08 09:00 → 2019-05-31 09:00 (+23d) | 2019-05-15 15:00 → 2019-06-07 15:00 (+23d) |  |  | 25d → 15d | constraint finish no earlier than 2019-05-15 15:00 → start no earlier than 2019-05-31 09:00 |
| 103 | Área 9 | 2019-05-15 09:00 → 2019-06-07 09:00 (+23d) | 2019-05-22 15:00 → 2019-06-14 15:00 (+23d) |  |  | 20d → 10d | constraint finish no earlier than 2019-05-22 15:00 → start no earlier than 2019-06-07 09:00 |
| 104 | Área 10 | 2019-05-22 09:00 → 2019-06-14 09:00 (+23d) | 2019-05-29 15:00 → 2019-06-21 15:00 (+23d) |  |  | 15d → 5d | constraint finish no earlier than 2019-05-29 15:00 → start no earlier than 2019-06-14 09:00 |
| 105 | Área 11 | 2019-05-29 09:00 → 2019-06-21 09:00 (+23d) | 2019-06-05 15:00 → 2019-06-28 15:00 (+23d) |  |  | 10d → 0d | constraint finish no earlier than 2019-06-05 15:00 → start no earlier than 2019-06-21 09:00 |
| 110 | **Publicação/Monetização/Polimento** | 2019-06-19 09:00 → 2019-07-01 09:00 (+12d) | 2019-06-28 15:00 → 2019-07-09 15:00 (+11d) | 8d? → 7d? |  |  |  |
| 111 | Monetização | 2019-06-19 09:00 → 2019-07-01 09:00 (+12d) | 2019-06-24 15:00 → 2019-07-04 15:00 (+10d) |  |  | 4d → 3d |  |
| 112 | Polimento | 2019-06-19 09:00 → 2019-07-01 09:00 (+12d) | 2019-06-27 15:00 → 2019-07-09 15:00 (+12d) |  |  | 1d → 0d |  |
| 113 | Publicação | 2019-06-25 09:00 → 2019-07-01 09:00 (+6d) | 2019-06-28 15:00 → 2019-07-04 15:00 (+6d) |  |  | 0d → 3d |  |

## Version 4 (saved 2019-03-29)

Note of the change: fonte de mana area 9 e checkpoint area 10

Last finish stays 2019-07-09. Complete tasks 61 → 68.

Changed:

| ID | Task | Start | Finish | Duration | Complete | Total float | Other |
| --- | --- | --- | --- | --- | --- | --- | --- |
| 7 | **Planejamento** |  |  | 42.5d? → 43.3d? |  |  |  |
| 12 | **planejamento da Área 1** |  |  | 10.5d? → 11.3d? |  |  |  |
| 20 | **Desenvolvimento** |  |  | 99.5d? → 100.9d? | 20% → 27% |  |  |
| 60 | **Área 1** |  |  | 14.5d? → 15.9d? | 16% → 30% |  |  |
| 62 | **implementação dos Inimigos** |  |  | 12.5d → 13.9d | 8% → 15% |  |  |
| 65 | Estocador |  | 2019-03-29 11:30 → 2019-03-28 21:30 (-1d) |  |  | 65.5d → 66.3d |  |
| 68 | atirador | 2019-03-22 09:00 → 2019-03-29 12:30 A (+7d) | 2019-03-29 11:30 → 2019-03-29 15:00 A | 9d? → 0.5d? | 0% → 100% | 65.5d → none | constraint none → start no earlier than 2019-03-29 12:30 |
| 69 | reprodutor |  | 2019-03-29 11:30 → 2019-03-28 21:30 (-1d) |  |  | 65.5d → 66.3d |  |
| 70 | fortão |  | 2019-03-29 11:30 → 2019-03-28 21:30 (-1d) |  |  | 65.5d → 66.3d |  |
| 71 | defensor |  | 2019-03-29 11:30 → 2019-03-28 21:30 (-1d) |  |  | 65.5d → 66.3d |  |
| 72 | voador perseguidor | 2019-03-22 09:00 → 2019-03-28 19:00 A (+6d) | 2019-03-29 11:30 → 2019-03-28 23:00 A (-1d) | 9d? → 0.8d? | 0% → 100% | 65.5d → none | constraint none → start no earlier than 2019-03-28 19:00 |
| 74 | implementação do chefe | 2019-03-23 11:30 → 2019-03-25 20:00 (+2d) |  |  |  |  |  |
| 76 | implementação das bareriras por habilidades |  |  |  | 10% → 50% |  |  |
| 78 | **Construção do Cenario** |  |  | 13d? → 14.4d? | 37% → 60% |  |  |
| 84 | Area dos Losangulos Perdidos | 2019-03-27 09:00 → 2019-03-28 12:30 A (+1d) | 2019-03-27 15:00 → 2019-03-28 15:00 A (+1d) | 1d? → 0.5d? | 0% → 100% | 67d → none | constraint start no earlier than 2019-03-27 09:00 → start no earlier than 2019-03-28 12:30 |
| 85 | SubArea indice 8 | 2019-03-27 09:00 → 2019-03-28 12:30 A (+1d) | 2019-03-27 15:00 → 2019-03-28 23:00 A (+1d) | 1d? → 0.8d? | 0% → 100% | 67d → none | constraint start no earlier than 2019-03-27 09:00 → start no earlier than 2019-03-28 19:00 |
| 86 | Subarea indice22 | 2019-03-27 09:00 → 2019-03-28 19:00 A (+1d) | 2019-03-27 15:00 → 2019-03-28 23:00 A (+1d) | 1d? → 0.8d? | 0% → 100% | 67d → none | constraint start no earlier than 2019-03-27 09:00 → start no earlier than 2019-03-28 19:00 |
| 87 | subArea indice 9 | 2019-03-27 09:00 → 2019-03-29 09:00 A (+2d) | 2019-03-28 15:00 → 2019-03-29 22:00 A (+1d) | 2d? → 1.1d? | 0% → 100% | 66d → none | constraint finish no earlier than 2019-03-28 15:00 → start no earlier than 2019-03-29 09:00 |
| 88 | subArea indice10 - OCheckPoint Intermediario | 2019-03-28 09:00 → 2019-03-29 19:00 A (+1d) | 2019-03-28 15:00 → 2019-03-29 22:00 A (+1d) | 1d? → 0.6d? | 0% → 100% | 66d → none | constraint start no earlier than 2019-03-28 09:00 → start no earlier than 2019-03-29 19:00 |

## Version 5 (saved 2019-04-16)

Note of the change: Incluindo sons no jogo Area 1 98% concluida restando posicionar Itens e introduzir algumas funções 13 inimigos implmentados 1 boss implementado 1 Update acessivel

Last finish stays 2019-07-09. Complete tasks 68 → 104.

Added:

| ID | Task | Duration | Start | Finish | Constraint |
| --- | --- | --- | --- | --- | --- |
| 96 | **Inserção de som e musica baseados na area 1** | 3.6d? | 2019-04-13 09:00 A | 2019-04-16 15:00 |  |
| 97 | **Musicas** | 0.6d? | 2019-04-13 09:00 A | 2019-04-13 12:00 A |  |
| 98 | Musica da Intro | 0.6d? | 2019-04-13 09:00 A | 2019-04-13 12:00 A | start no earlier than 2019-04-13 09:00 |
| 99 | musica standar da aventura | 0.6d? | 2019-04-13 09:00 A | 2019-04-13 12:00 A | start no earlier than 2019-04-13 09:00 |
| 100 | musica do acampamento | 0.6d? | 2019-04-13 09:00 A | 2019-04-13 12:00 A | start no earlier than 2019-04-13 09:00 |
| 101 | tema do Tyron/Tales | 0.6d? | 2019-04-13 09:00 A | 2019-04-13 12:00 A | start no earlier than 2019-04-13 09:00 |
| 102 | **Efeitos Sonoros** | 3.6d? | 2019-04-13 09:00 A | 2019-04-16 15:00 |  |
| 103 | som da espada | 0.6d? | 2019-04-13 09:00 A | 2019-04-13 12:00 A | start no earlier than 2019-04-13 09:00 |
| 104 | som do aplica dano | 0.6d? | 2019-04-13 09:00 A | 2019-04-13 12:00 A | start no earlier than 2019-04-13 09:00 |
| 105 | som do recebe dano | 0.6d? | 2019-04-13 09:00 A | 2019-04-13 12:00 A | start no earlier than 2019-04-13 09:00 |
| 106 | som da false wall | 0.6d? | 2019-04-13 09:00 A | 2019-04-13 12:00 A | start no earlier than 2019-04-13 09:00 |
| 107 | som do dash | 0.6d? | 2019-04-13 09:00 A | 2019-04-13 12:00 A | start no earlier than 2019-04-13 09:00 |
| 108 | som do pulo | 0.6d? | 2019-04-13 09:00 A | 2019-04-13 12:00 A | start no earlier than 2019-04-13 09:00 |
| 109 | som do pulo duplo | 0.6d? | 2019-04-13 09:00 A | 2019-04-13 12:00 A | start no earlier than 2019-04-13 09:00 |
| 110 | som da magia | 0.6d? | 2019-04-13 09:00 A | 2019-04-13 12:00 A | start no earlier than 2019-04-13 09:00 |
| 111 | som do down arrow jump | 0.6d? | 2019-04-13 09:00 A | 2019-04-13 12:00 A | start no earlier than 2019-04-13 09:00 |
| 112 | vinhetaDoCheckPoint | 1d? | 2019-04-13 13:00 A | 2019-04-13 18:00 A | start no earlier than 2019-04-13 13:00 |
| 113 | som do permanever no CheckPoint | 1d? | 2019-04-13 13:00 A | 2019-04-13 18:00 A | start no earlier than 2019-04-13 13:00 |
| 114 | som do dano fatal | 1d? | 2019-04-13 13:00 A | 2019-04-13 18:00 A | start no earlier than 2019-04-13 13:00 |
| 115 | som do losangulo finalizador(Morte) | 1d? | 2019-04-13 13:00 A | 2019-04-13 18:00 A | start no earlier than 2019-04-13 13:00 |
| 116 | sons da HUD Hexagonos | 0.5d? | 2019-04-15 12:30 A | 2019-04-15 15:00 A | start no earlier than 2019-04-15 12:30 |
| 117 | apito do menu Suspenso | 0.5d? | 2019-04-15 12:30 A | 2019-04-15 15:00 A | start no earlier than 2019-04-15 12:30 |
| 118 | som das barreiras de pedrinhas | 0.5d? | 2019-04-15 12:30 A | 2019-04-15 15:00 A | start no earlier than 2019-04-15 12:30 |
| 119 | som do ataque em falso contra as barreiras | 0.5d? | 2019-04-15 12:30 A | 2019-04-15 15:00 A | start no earlier than 2019-04-15 12:30 |
| 120 | som para saida do checkPoint | 0.5d? | 2019-04-15 12:30 A | 2019-04-15 15:00 A | start no earlier than 2019-04-15 12:30 |
| 121 | som dos losangulos | 0.5d? | 2019-04-16 09:00 | 2019-04-16 11:30 | start no earlier than 2019-04-16 09:00 |
| 122 | musica e sons dos inimigos atiradores na primeira armadilha | 0.5d? | 2019-04-16 09:00 | 2019-04-16 11:30 | start no earlier than 2019-04-16 09:00 |
| 123 | vinheta de item importante pego | 0.5d? | 2019-04-16 12:30 | 2019-04-16 15:00 | start no earlier than 2019-04-16 12:30 |

Changed:

| ID | Task | Start | Finish | Duration | Complete | Total float | Other |
| --- | --- | --- | --- | --- | --- | --- | --- |
| 20 | **Desenvolvimento** |  |  | 100.9d? → 104.9d? | 27% → 53% |  |  |
| 60 | **Área 1** |  | 2019-04-03 15:00 → 2019-04-12 15:00 (+9d) | 15.9d? → 25.3d? | 30% → 99% | 62d → 56.6d |  |
| 62 | **implementação dos Inimigos** | 2019-03-22 09:00 A → 2019-03-22 09:00 |  |  | 15% → 100% |  |  |
| 65 | Estocador | 2019-03-22 09:00 → 2019-04-05 09:00 A (+14d) | 2019-03-28 21:30 → 2019-04-05 11:30 A (+8d) | 9d? → 0.5d? | 0% → 100% | 66.3d → none | constraint none → start no earlier than 2019-04-05 09:00 |
| 69 | reprodutor | 2019-03-22 09:00 → 2019-04-03 09:00 A (+12d) | 2019-03-28 21:30 → 2019-04-03 11:30 A (+6d) | 9d? → 0.5d? | 0% → 100% | 66.3d → none | constraint none → start no earlier than 2019-04-03 09:00 |
| 70 | fortão | 2019-03-22 09:00 → 2019-04-01 09:00 A (+10d) | 2019-03-28 21:30 → 2019-04-01 15:00 A (+4d) | 9d? → 1d? | 0% → 100% | 66.3d → none | constraint none → start no earlier than 2019-04-01 09:00 |
| 71 | defensor | 2019-03-22 09:00 → 2019-04-06 09:00 A (+15d) | 2019-03-28 21:30 → 2019-04-06 18:00 A (+9d) | 9d? → 1.6d? | 0% → 100% | 66.3d → none | constraint none → start no earlier than 2019-04-06 09:00 |
| 74 | implementação do chefe | 2019-03-25 20:00 → 2019-04-09 09:00 A (+15d) | 2019-04-03 15:00 → 2019-04-12 15:00 A (+9d) | 10d? → 4.8d? | 0% → 100% | 62d → none | constraint finish no earlier than 2019-04-03 15:00 → start no earlier than 2019-04-09 09:00 |
| 75 | posicionamento e implementação de itens | 2019-03-23 09:00 A |  |  | 0% → 25% | 71.9d → 77.3d |  |
| 76 | implementação das bareriras por habilidades |  | 2019-04-03 15:00 A |  | 50% → 100% | 62d → none |  |
| 77 | criação dos tiles e artes |  | 2019-03-21 15:00 → 2019-04-02 11:30 A (+12d) | 1d → 1.5d | 25% → 100% | 75.9d → none |  |
| 78 | **Construção do Cenario** |  | 2019-04-03 15:00 → 2019-04-12 11:30 A (+9d) | 14.4d? → 23.3d? | 60% → 100% | 62d → none |  |
| 89 | subArea indice 11 - Obstaculos | 2019-03-28 09:00 → 2019-04-01 12:30 A (+4d) | 2019-03-28 15:00 → 2019-04-01 15:00 A (+4d) | 1d? → 0.5d? | 0% → 100% | 65d → none | constraint start no earlier than 2019-03-28 09:00 → start no earlier than 2019-04-01 12:30 |
| 90 | subArea indice 12 - Obstaculos continuam | 2019-03-29 09:00 → 2019-04-02 09:00 A (+4d) | 2019-03-29 15:00 → 2019-04-02 11:30 A (+4d) | 1d? → 0.5d? | 0% → 100% | 65d → none | constraint start no earlier than 2019-03-29 09:00 → start no earlier than 2019-04-02 09:00 |
| 91 | Sub Area a grande subida | 2019-04-01 09:00 → 2019-04-03 09:00 A (+2d) | 2019-04-01 15:00 → 2019-04-03 11:30 A (+2d) | 1d? → 0.5d? | 0% → 100% | 64d → none | constraint finish no earlier than 2019-04-01 15:00 → start no earlier than 2019-04-03 09:00 |
| 92 | SubAreas indices 13,14 e 18 | 2019-04-01 09:00 → 2019-04-03 09:00 A (+2d) | 2019-04-01 15:00 → 2019-04-03 11:30 A (+2d) | 1d? → 0.5d? | 0% → 100% | 64d → none | constraint start no earlier than 2019-04-01 09:00 → start no earlier than 2019-04-03 09:00 |
| 93 | subArea de indice 24 - acampamento de exilados | 2019-04-01 09:00 → 2019-04-04 09:00 A (+3d) | 2019-04-02 15:00 → 2019-04-05 15:00 A (+3d) | 2d? → 1.5d? | 0% → 100% | 63d → none | constraint finish no earlier than 2019-04-02 15:00 → start no earlier than 2019-04-04 09:00 |
| 94 | subAreas indices 16,23 e 20 | 2019-04-02 09:00 → 2019-04-05 12:30 A (+3d) | 2019-04-02 15:00 → 2019-04-05 15:00 A (+3d) | 1d? → 0.5d? | 0% → 100% | 63d → none | constraint start no earlier than 2019-04-02 09:00 → start no earlier than 2019-04-05 12:30 |
| 95 | subArea caminho do Chefe e Chefe | 2019-04-03 09:00 → 2019-04-08 09:00 A (+5d) | 2019-04-03 15:00 → 2019-04-12 11:30 A (+9d) | 1d? → 1.5d? | 0% → 100% | 62d → none | constraint start no earlier than 2019-04-03 09:00 → start no earlier than 2019-04-08 09:00 |
| 124 | Área 2 | 2019-04-03 09:00 → 2019-04-05 11:00 (+2d) |  |  |  | 55d → 56.6d |  |
| 125 | Área 3 | 2019-04-12 09:00 → 2019-04-13 13:00 (+1d) |  |  |  |  |  |
| 134 | **Testes/Correções/Balanceamento** | 2019-04-10 09:00 → 2019-04-11 13:00 (+1d) |  |  |  |  |  |
| 135 | Testes com conhecidos | 2019-04-10 09:00 → 2019-04-11 13:00 (+1d) |  |  |  |  |  |

## Version 6 (saved 2019-04-18)

Note of the change: Inserindo funções dos dois emblemas iniciais

Last finish stays 2019-07-09. Complete tasks 104 → 107.

Changed:

| ID | Task | Start | Finish | Duration | Complete | Total float |
| --- | --- | --- | --- | --- | --- | --- |
| 20 | **Desenvolvimento** |  |  |  | 53% → 54% |  |
| 60 | **Área 1** |  | 2019-04-12 15:00 → 2019-04-17 11:30 (+5d) | 25.3d? → 29.4d? | 99% → 98% | 56.6d → 52.5d |
| 75 | posicionamento e implementação de itens |  | 2019-03-23 12:00 → 2019-04-17 11:30 (+25d) | 0.6d? → 1.1d? | 25% → 27% | 77.3d → 52.5d |
| 96 | **Inserção de som e musica baseados na area 1** |  | 2019-04-16 15:00 A |  | 91% → 100% | 53d → none |
| 102 | **Efeitos Sonoros** |  | 2019-04-16 15:00 A |  | 89% → 100% | 53d → none |
| 121 | som dos losangulos | 2019-04-16 09:00 A | 2019-04-16 11:30 A |  | 0% → 100% | 53.5d → none |
| 122 | musica e sons dos inimigos atiradores na primeira armadilha | 2019-04-16 09:00 A | 2019-04-16 11:30 A |  | 0% → 100% | 53.5d → none |
| 123 | vinheta de item importante pego | 2019-04-16 12:30 A | 2019-04-16 15:00 A |  | 0% → 100% | 53d → none |

## Version 7 (saved 2019-04-30)

Note of the change: no caminho de terminar o shop de herika

Last finish stays 2019-07-09. Complete tasks 107 → 110.

Added:

| ID | Task | Duration | Start | Finish | Constraint |
| --- | --- | --- | --- | --- | --- |
| 96 | **Complementos da Área 1** | 2d | 2019-04-23 09:00 | 2019-04-24 15:00 |  |
| 97 | Herika no acampamento | 1.5d? | 2019-04-23 12:30 A | 2019-04-30 15:00 | start no earlier than 2019-04-23 12:30 |
| 98 | Capsula no Acampamento | 0.5d? | 2019-04-23 12:30 A | 2019-04-23 15:00 A | start no earlier than 2019-04-23 12:30 |
| 99 | Terminar Itens disponiveis com Herika | 1d? | 2019-04-26 09:00 A | 2019-04-29 11:30 A | start no earlier than 2019-04-26 09:00 |

Changed:

| ID | Task | Finish | Duration | Complete | Total float |
| --- | --- | --- | --- | --- | --- |
| 20 | **Desenvolvimento** |  |  | 54% → 56% | 0d → 7d |
| 60 | **Área 1** | 2019-04-17 11:30 → 2019-04-30 15:00 (+13d) | 29.4d? → 38.9d? | 98% → 99% | 52.5d → 50d |
| 75 | posicionamento e implementação de itens | 2019-04-17 11:30 → 2019-04-23 11:30 A (+6d) | 1.1d? → 2.6d? | 27% → 100% | 52.5d → none |

## Version 8 (saved 2019-05-03)

Note of the change: inicio do aquifero

Last finish 2019-07-09 → 2020-04-20 (+286d). Complete tasks 110 → 115.

Added:

| ID | Task | Duration | Start | Finish | Constraint |
| --- | --- | --- | --- | --- | --- |
| 20 | **planejamento da Área 2** | 0.5d? | 2019-05-02 12:30 A | 2019-05-02 15:00 |  |
| 21 | escolha do Tema | 0.5d? | 2019-05-02 12:30 A | 2019-05-02 15:00 A | start no earlier than 2019-05-02 12:30 |
| 22 | NPCs | 0.5d? | 2019-05-02 12:30 A | 2019-05-02 15:00 | start no earlier than 2019-05-02 12:30 |
| 23 | Itens Disponiveis | 0.5d? | 2019-05-02 12:30 A | 2019-05-02 15:00 A | start no earlier than 2019-05-02 12:30 |
| 24 | Inimigos | 0.5d? | 2019-05-02 12:30 A | 2019-05-02 15:00 A | start no earlier than 2019-05-02 12:30 |
| 25 | Chefe | 0.5d? | 2019-05-02 12:30 A | 2019-05-02 15:00 A | start no earlier than 2019-05-02 12:30 |
| 26 | Caminhos bloqueados por habilidades | 0.5d? | 2019-05-02 12:30 | 2019-05-02 15:00 | start no earlier than 2019-05-02 12:30 |
| 136 | **implementação dos Inimigos** | 1d? | 2019-05-03 09:00 | 2019-05-03 15:00 |  |
| 137 | I - Escondidinho | 1d? | 2019-05-03 09:00 | 2019-05-03 15:00 |  |
| 138 | II - Investidor Local | 1d? | 2019-05-03 09:00 | 2019-05-03 15:00 |  |
| 139 | III - Borrifador | 1d? | 2019-05-03 09:00 | 2019-05-03 15:00 |  |
| 140 | IV - Atirador X | 1d? | 2019-05-03 09:00 | 2019-05-03 15:00 |  |
| 141 | V - Mordedor escondido | 1d? | 2019-05-03 09:00 | 2019-05-03 15:00 |  |
| 142 | VI - Voador Investidor | 1d? | 2019-05-03 09:00 | 2019-05-03 15:00 |  |
| 143 | VII - Guerreiro Local | 1d? | 2019-05-03 09:00 | 2019-05-03 15:00 |  |
| 144 | VIII - impulso Surpresa | 1d? | 2019-05-03 09:00 | 2019-05-03 15:00 |  |
| 145 | IX - Couraça nadadora | 1d? | 2019-05-03 09:00 | 2019-05-03 15:00 |  |
| 146 | X - Couraça voadora | 1d? | 2019-05-03 09:00 | 2019-05-03 15:00 |  |
| 147 | XI - Fixo Atirador | 1d? | 2019-05-03 09:00 | 2019-05-03 15:00 |  |
| 148 | Implementação do chefe: O mago da seta sombria | 1d? | 2019-05-03 09:00 | 2019-05-03 15:00 |  |
| 149 | posicionamento e implementação de itens | 1d? | 2019-05-03 09:00 | 2019-05-03 15:00 |  |
| 150 | Criação dos tiles e artes | 1d? | 2019-05-03 09:00 | 2019-05-03 15:00 |  |
| 151 | **Construção do Cenario** | 1d? | 2019-05-03 09:00 | 2019-05-03 15:00 |  |
| 152 | Intro | 1d? | 2019-05-03 09:00 | 2019-05-03 15:00 |  |
| 153 | Apresentação dos inimigos basicos | 1d? | 2019-05-03 09:00 | 2019-05-03 15:00 |  |
| 154 | Preparação para a subida | 1d? | 2019-05-03 09:00 | 2019-05-03 15:00 |  |
| 155 | plataformas para explorar Inimigo IV | 1d? | 2019-05-03 09:00 | 2019-05-03 15:00 |  |
| 156 | Desafio com Inimigo VIII | 1d? | 2019-05-03 09:00 | 2019-05-03 15:00 |  |
| 157 | Surpresas com Inimigo V | 1d? | 2019-05-03 09:00 | 2019-05-03 15:00 |  |
| 158 | Descida com espinhos | 1d? | 2019-05-03 09:00 | 2019-05-03 15:00 |  |
| 159 | Retorno do Chefe | 1d? | 2019-05-03 09:00 | 2019-05-03 15:00 |  |
| 160 | Desafio com Inimigo VII | 1d? | 2019-05-03 09:00 | 2019-05-03 15:00 |  |
| 161 | Mais descida com espinhos | 1d? | 2019-05-03 09:00 | 2019-05-03 15:00 |  |
| 162 | Preludio da Intervenção dos 80 tiros | 1d? | 2019-05-03 09:00 | 2019-05-03 15:00 |  |
| 163 | Inimigos opcionais do tipo VII | 1d? | 2019-05-03 09:00 | 2019-05-03 15:00 |  |
| 164 | Corredeira de pedras rumo ao chefe | 1d? | 2019-05-03 09:00 | 2019-05-03 15:00 |  |
| 165 | Zona do Chefe | 1d? | 2019-05-03 09:00 | 2019-05-03 15:00 |  |
| 166 | Área de itens pós chefe | 1d? | 2019-05-03 09:00 | 2019-05-03 15:00 |  |
| 167 | CheckPoint | 1d? | 2019-05-03 09:00 | 2019-05-03 15:00 |  |
| 168 | Desafio com Inimigos IX | 1d? | 2019-05-03 09:00 | 2019-05-03 15:00 |  |
| 169 | Desafio com Inimigos X | 1d? | 2019-05-03 09:00 | 2019-05-03 15:00 |  |
| 170 | Local de Itens subarea20 | 1d? | 2019-05-03 09:00 | 2019-05-03 15:00 |  |
| 171 | Conexão de caminhos | 1d? | 2019-05-03 09:00 | 2019-05-03 15:00 |  |
| 172 | Desafio das escadas multicoloridas | 1d? | 2019-05-03 09:00 | 2019-05-03 15:00 |  |

Changed:

| ID | Task | Start | Finish | Duration | Complete | Total float | Other |
| --- | --- | --- | --- | --- | --- | --- | --- |
| 7 | **Planejamento** |  | 2019-03-29 15:00 A → 2019-05-02 15:00 (+34d) | 43.3d? → 71.9d? | 100% → 98% | none → 252d |  |
| 27 | **Desenvolvimento** |  | 2019-06-28 15:00 → 2020-04-09 15:00 (+286d) | 104.9d? → 308.9d? | 56% → 27% | 7d → 0d |  |
| 67 | **Área 1** |  | 2019-04-30 15:00 → 2019-05-01 15:00 A (+1d) | 38.9d? → 39.9d? | 99% → 100% | 50d → none |  |
| 103 | **Complementos da Área 1** |  |  |  | 88% → 100% |  |  |
| 104 | Herika no acampamento |  | 2019-04-30 15:00 → 2019-05-01 15:00 A (+1d) | 1.5d? → 2d? | 75% → 100% | 50d → none |  |
| 135 | **Área 2** | 2019-04-05 11:00 → 2019-05-03 09:00 (+28d) | 2019-04-12 15:00 → 2019-06-03 15:00 (+52d) | 8d? → 22d |  | 56.6d → none | constraint finish no earlier than 2019-04-12 15:00 → none |
| 173 | Área 3 | 2019-04-13 13:00 → 2019-06-05 09:00 (+53d) | 2019-04-24 15:00 → 2019-07-05 15:00 (+72d) | 9d? → 23d? |  | 47d → 199d | constraint finish no earlier than 2019-04-24 15:00 → finish no earlier than 2019-07-05 15:00 |
| 174 | Área 4 | 2019-04-24 09:00 → 2019-07-08 09:00 (+75d) | 2019-05-03 15:00 → 2019-08-08 15:00 (+97d) | 8d? → 24d? |  | 40d → 175d | constraint finish no earlier than 2019-05-03 15:00 → finish no earlier than 2019-08-08 15:00 |
| 175 | Área 5 | 2019-05-03 09:00 → 2019-08-12 09:00 (+101d) | 2019-05-15 15:00 → 2019-09-12 15:00 (+120d) | 9d? → 24d? |  | 32d → 150d | constraint finish no earlier than 2019-05-15 15:00 → finish no earlier than 2019-09-12 15:00 |
| 176 | Área 6 | 2019-05-15 09:00 → 2019-09-16 09:00 (+124d) | 2019-05-24 15:00 → 2019-10-16 15:00 (+145d) | 8d? → 23d? |  | 25d → 126d | constraint finish no earlier than 2019-05-24 15:00 → finish no earlier than 2019-10-16 15:00 |
| 177 | Área 7 | 2019-05-24 09:00 → 2019-10-18 09:00 (+147d) | 2019-05-31 15:00 → 2019-11-18 15:00 (+171d) | 6d? → 22d? |  | 20d → 103d | constraint finish no earlier than 2019-05-31 15:00 → finish no earlier than 2019-11-18 15:00 |
| 178 | Área 8 | 2019-05-31 09:00 → 2019-11-20 09:00 (+173d) | 2019-06-07 15:00 → 2019-12-20 15:00 (+196d) | 6d? → 23d? |  | 15d → 79d | constraint start no earlier than 2019-05-31 09:00 → finish no earlier than 2019-12-20 15:00 |
| 179 | Área 9 | 2019-06-07 09:00 → 2020-01-02 09:00 (+209d) | 2019-06-14 15:00 → 2020-02-03 15:00 (+234d) | 6d? → 23d? |  | 10d → 48d | constraint start no earlier than 2019-06-07 09:00 → finish no earlier than 2020-02-03 15:00 |
| 180 | Área 10 | 2019-06-14 09:00 → 2020-02-05 09:00 (+236d) | 2019-06-21 15:00 → 2020-03-05 15:00 (+258d) | 6d? → 22d? |  | 5d → 25d | constraint start no earlier than 2019-06-14 09:00 → finish no earlier than 2020-03-05 15:00 |
| 181 | Área 11 | 2019-06-21 09:00 → 2020-03-09 09:00 (+262d) | 2019-06-28 15:00 → 2020-04-09 15:00 (+286d) | 6d? → 24d? |  |  | constraint start no earlier than 2019-06-21 09:00 → finish no earlier than 2020-04-09 15:00 |
| 182 | **Testes/Correções/Balanceamento** | 2019-04-11 13:00 → 2019-06-03 09:00 (+53d) | 2019-06-19 15:00 → 2020-03-27 15:00 (+282d) | 51d? → 215d |  | 14d → none |  |
| 186 | **Publicação/Monetização/Polimento** | 2019-07-01 09:00 → 2020-04-10 09:00 (+284d) | 2019-07-09 15:00 → 2020-04-20 15:00 (+286d) |  |  |  |  |
| 187 | Monetização | 2019-07-01 09:00 → 2020-04-10 09:00 (+284d) | 2019-07-04 15:00 → 2020-04-15 15:00 (+286d) |  |  |  |  |
| 188 | Polimento | 2019-07-01 09:00 → 2020-04-10 09:00 (+284d) | 2019-07-09 15:00 → 2020-04-20 15:00 (+286d) |  |  |  |  |
| 189 | Publicação | 2019-07-01 09:00 → 2020-04-10 09:00 (+284d) | 2019-07-04 15:00 → 2020-04-15 15:00 (+286d) |  |  |  |  |

## Version 9 (saved 2019-05-13)

Note of the change: aquifero do buscador preparacao para a subida

Last finish stays 2020-04-20. Complete tasks 115 → 120.

Changed:

| ID | Task | Start | Finish | Duration | Complete | Total float | Other |
| --- | --- | --- | --- | --- | --- | --- | --- |
| 27 | **Desenvolvimento** |  |  |  | 27% → 29% |  |  |
| 135 | **Área 2** | 2019-05-03 09:00 A |  |  | 0% → 13% |  |  |
| 136 | **implementação dos Inimigos** | 2019-05-03 09:00 A | 2019-05-03 15:00 → 2019-05-13 11:30 (+10d) | 1d? → 6.5d? | 0% → 22% | 244d → 238.5d |  |
| 137 | I - Escondidinho | 2019-05-03 09:00 → 2019-05-09 09:00 A (+6d) | 2019-05-03 15:00 → 2019-05-09 11:30 A (+6d) | 1d? → 0.5d? | 0% → 100% | 244d → none | constraint none → start no earlier than 2019-05-09 09:00 |
| 138 | II - Investidor Local | 2019-05-03 09:00 → 2019-05-09 12:30 A (+6d) | 2019-05-03 15:00 → 2019-05-09 15:00 A (+6d) | 1d? → 0.5d? | 0% → 100% | 244d → none | constraint none → start no earlier than 2019-05-09 12:30 |
| 139 | III - Borrifador | 2019-05-03 09:00 → 2019-05-10 12:30 A (+7d) | 2019-05-03 15:00 → 2019-05-13 11:30 A (+10d) |  | 0% → 100% | 244d → none | constraint none → start no earlier than 2019-05-10 12:30 |
| 142 | VI - Voador Investidor | 2019-05-03 09:00 → 2019-05-13 09:00 A (+10d) | 2019-05-03 15:00 → 2019-05-13 11:30 (+10d) | 1d? → 0.5d? | 0% → 25% | 244d → 238.5d | constraint none → start no earlier than 2019-05-13 09:00 |
| 151 | **Construção do Cenario** | 2019-05-03 09:00 A | 2019-05-03 15:00 → 2019-05-13 15:00 (+10d) | 1d? → 7d? | 0% → 10% | 244d → 238d |  |
| 152 | Intro | 2019-05-03 09:00 A | 2019-05-03 15:00 → 2019-05-09 11:30 A (+6d) |  | 0% → 100% | 244d → none |  |
| 153 | Apresentação dos inimigos basicos | 2019-05-03 09:00 → 2019-05-09 12:30 A (+6d) | 2019-05-03 15:00 → 2019-05-13 11:30 A (+10d) |  | 0% → 100% | 244d → none | constraint none → start no earlier than 2019-05-09 12:30 |
| 154 | Preparação para a subida | 2019-05-03 09:00 → 2019-05-13 12:30 A (+10d) | 2019-05-03 15:00 → 2019-05-13 15:00 (+10d) | 1d? → 0.5d? | 0% → 25% | 244d → 238d | constraint none → start no earlier than 2019-05-13 12:30 |

## Version 10 (saved 2019-05-16)

Note of the change: subida do aquifero checkpoint do aquifero inicio do desafio dos xshooters

Last finish stays 2020-04-20. Complete tasks 120 → 122.

Added:

| ID | Task | Duration | Start | Finish | Constraint |
| --- | --- | --- | --- | --- | --- |
| 155 | Subida | 0.5d? | 2019-05-16 12:30 A | 2019-05-16 15:00 | start no earlier than 2019-05-16 12:30 |

Changed:

| ID | Task | Start | Finish | Duration | Complete | Total float | Other |
| --- | --- | --- | --- | --- | --- | --- | --- |
| 27 | **Desenvolvimento** |  |  |  | 29% → 30% | 0d → 7d |  |
| 135 | **Área 2** |  |  |  | 13% → 21% |  |  |
| 136 | **implementação dos Inimigos** |  | 2019-05-13 11:30 → 2019-05-15 11:30 (+2d) | 6.5d? → 8.5d? | 22% → 32% | 238.5d → 236.5d |  |
| 140 | IV - Atirador X | 2019-05-03 09:00 → 2019-05-15 09:00 (+12d) | 2019-05-03 15:00 → 2019-05-15 11:30 (+12d) | 1d? → 0.5d? |  | 244d → 236.5d | constraint none → start no earlier than 2019-05-15 09:00 |
| 142 | VI - Voador Investidor |  | 2019-05-13 11:30 → 2019-05-14 15:00 A (+1d) | 0.5d? → 1d? | 25% → 100% | 238.5d → none |  |
| 149 | posicionamento e implementação de itens | 2019-05-03 09:00 → 2019-05-15 12:30 A (+12d) | 2019-05-03 15:00 → 2019-05-15 15:00 (+12d) | 1d? → 0.5d? | 0% → 25% | 244d → 243d | constraint none → start no earlier than 2019-05-15 12:30 |
| 151 | **Construção do Cenario** |  | 2019-05-13 15:00 → 2019-05-16 15:00 (+3d) | 7d? → 10d? | 10% → 18% | 238d → 235d |  |
| 154 | Preparação para a subida |  | 2019-05-13 15:00 → 2019-05-15 15:00 A (+2d) | 0.5d? → 1.5d? | 25% → 100% | 238d → none |  |

## Version 11 (saved 2019-05-25)

Note of the change: em meio a capsula do aquifero

Last finish stays 2020-04-20. Complete tasks 122 → 138.

Added:

| ID | Task | Duration | Start | Finish | Constraint |
| --- | --- | --- | --- | --- | --- |
| 156 | CheckPOintDoAquifero | 0.5d? | 2019-05-17 09:00 A | 2019-05-17 11:30 A | start no earlier than 2019-05-17 09:00 |

Removed: 168 CheckPoint

Changed:

| ID | Task | Start | Finish | Duration | Complete | Total float | Other |
| --- | --- | --- | --- | --- | --- | --- | --- |
| 27 | **Desenvolvimento** |  |  | 308.9d? → 311.1d? | 30% → 33% |  |  |
| 135 | **Área 2** | 2019-05-03 09:00 A → 2019-05-03 09:00 |  | 22d → 24.2d | 21% → 60% |  |  |
| 136 | **implementação dos Inimigos** |  | 2019-05-15 11:30 → 2019-05-24 11:30 (+9d) | 8.5d? → 16.1d? | 32% → 77% | 236.5d → 231.1d |  |
| 140 | IV - Atirador X | 2019-05-15 09:00 A | 2019-05-15 11:30 → 2019-05-18 12:00 A (+3d) | 0.5d? → 1.1d? | 0% → 100% | 236.5d → none |  |
| 141 | V - Mordedor escondido | 2019-05-03 09:00 → 2019-05-20 12:30 A (+17d) | 2019-05-03 15:00 → 2019-05-20 15:00 A (+17d) | 1d? → 0.5d? | 0% → 100% | 244d → none | constraint none → start no earlier than 2019-05-20 12:30 |
| 143 | VII - Guerreiro Local | 2019-05-03 09:00 → 2019-05-22 12:30 A (+19d) | 2019-05-03 15:00 → 2019-05-23 11:30 A (+20d) |  | 0% → 100% | 244d → none | constraint none → start no earlier than 2019-05-22 12:30 |
| 144 | VIII - impulso Surpresa | 2019-05-03 09:00 → 2019-05-18 09:00 A (+15d) | 2019-05-03 15:00 → 2019-05-18 12:00 A (+15d) | 1d? → 0.6d? | 0% → 100% | 244d → none | constraint none → start no earlier than 2019-05-18 09:00 |
| 147 | XI - Fixo Atirador | 2019-05-03 09:00 → 2019-05-24 09:00 A (+21d) | 2019-05-03 15:00 → 2019-05-24 11:30 A (+21d) | 1d? → 0.5d? | 0% → 100% | 244d → none | constraint none → start no earlier than 2019-05-24 09:00 |
| 149 | posicionamento e implementação de itens |  | 2019-05-15 15:00 → 2019-05-17 15:00 (+2d) | 0.5d? → 1d? | 25% → 35% | 243d → 243.2d |  |
| 150 | Criação dos tiles e artes | 2019-05-03 09:00 → 2019-05-02 12:30 A (-1d) | 2019-05-03 15:00 → 2019-05-22 11:30 (+19d) |  | 0% → 75% | 244d → 240.1d | constraint none → start no earlier than 2019-05-02 12:30 |
| 151 | **Construção do Cenario** |  | 2019-05-16 15:00 → 2019-05-25 12:00 (+9d) | 10d? → 17.2d? | 18% → 56% | 235d → 230d |  |
| 155 | Subida |  | 2019-05-16 15:00 → 2019-05-17 11:30 A (+1d) | 0.5d? → 1d? | 75% → 100% | 235d → none |  |
| 157 | plataformas para explorar Inimigo IV | 2019-05-03 09:00 → 2019-05-17 12:30 A (+14d) | 2019-05-03 15:00 → 2019-05-17 15:00 A (+14d) | 1d? → 0.5d? | 0% → 100% | 244d → none | constraint none → start no earlier than 2019-05-17 12:30 |
| 158 | Desafio com Inimigo VIII | 2019-05-03 09:00 → 2019-05-18 09:00 A (+15d) | 2019-05-03 15:00 → 2019-05-18 12:00 A (+15d) | 1d? → 0.6d? | 0% → 100% | 244d → none | constraint none → start no earlier than 2019-05-18 09:00 |
| 159 | Surpresas com Inimigo V | 2019-05-03 09:00 → 2019-05-20 12:30 A (+17d) | 2019-05-03 15:00 → 2019-05-20 15:00 A (+17d) | 1d? → 0.5d? | 0% → 100% | 244d → none | constraint none → start no earlier than 2019-05-20 12:30 |
| 160 | Descida com espinhos | 2019-05-03 09:00 → 2019-05-22 09:00 A (+19d) | 2019-05-03 15:00 → 2019-05-22 11:30 A (+19d) | 1d? → 0.5d? | 0% → 100% | 244d → none | constraint none → start no earlier than 2019-05-22 09:00 |
| 161 | Retorno do Chefe | 2019-05-03 09:00 → 2019-05-25 09:00 A (+22d) | 2019-05-03 15:00 → 2019-05-25 12:00 A (+22d) | 1d? → 0.6d? | 0% → 100% | 244d → none | constraint none → start no earlier than 2019-05-25 09:00 |
| 162 | Desafio com Inimigo VII | 2019-05-03 09:00 → 2019-05-22 12:30 A (+19d) | 2019-05-03 15:00 → 2019-05-23 11:30 A (+20d) |  | 0% → 100% | 244d → none | constraint none → start no earlier than 2019-05-22 12:30 |
| 163 | Mais descida com espinhos | 2019-05-03 09:00 → 2019-05-23 12:30 A (+20d) | 2019-05-03 15:00 → 2019-05-23 15:00 A (+20d) | 1d? → 0.5d? | 0% → 100% | 244d → none | constraint none → start no earlier than 2019-05-23 12:30 |
| 164 | Preludio da Intervenção dos 80 tiros | 2019-05-03 09:00 → 2019-05-24 09:00 A (+21d) | 2019-05-03 15:00 → 2019-05-24 11:30 A (+21d) | 1d? → 0.5d? | 0% → 100% | 244d → none | constraint none → start no earlier than 2019-05-24 09:00 |
| 165 | Inimigos opcionais do tipo VII | 2019-05-03 09:00 → 2019-05-24 12:30 A (+21d) | 2019-05-03 15:00 → 2019-05-24 15:00 A (+21d) | 1d? → 0.5d? | 0% → 100% | 244d → none | constraint none → start no earlier than 2019-05-24 12:30 |

## Version 12 (saved 2019-05-29)

Note of the change: seta sombria gameplay implementado

Last finish stays 2020-04-20. Complete tasks 138 → 139.

Changed:

| ID | Task | Start | Finish | Duration | Complete | Total float | Other |
| --- | --- | --- | --- | --- | --- | --- | --- |
| 135 | **Área 2** |  |  |  | 60% → 63% |  |  |
| 151 | **Construção do Cenario** |  | 2019-05-25 12:00 → 2019-05-28 15:00 (+3d) | 17.2d? → 20.2d? | 56% → 60% | 230d → 227d |  |
| 166 | Corredeira de pedras rumo ao chefe | 2019-05-03 09:00 → 2019-05-28 12:30 A (+25d) | 2019-05-03 15:00 → 2019-05-28 15:00 A (+25d) | 1d? → 0.5d? | 0% → 100% | 244.6d → none | constraint none → start no earlier than 2019-05-28 12:30 |

## Version 13 (saved 2019-06-05)

Note of the change: iniciando pos chefe seta sombria

Last finish stays 2020-04-20. Complete tasks 139 → 141.

Changed:

| ID | Task | Start | Finish | Duration | Complete | Total float | Other |
| --- | --- | --- | --- | --- | --- | --- | --- |
| 27 | **Desenvolvimento** |  |  |  | 33% → 34% |  |  |
| 135 | **Área 2** |  |  |  | 63% → 71% |  |  |
| 148 | Implementação do chefe: O mago da seta sombria | 2019-05-03 09:00 → 2019-05-31 12:30 A (+28d) | 2019-05-03 15:00 → 2019-06-05 15:00 A (+33d) | 1d? → 2d? | 0% → 100% | 244.6d → none | constraint none → start no earlier than 2019-05-31 12:30 |
| 151 | **Construção do Cenario** |  | 2019-05-28 15:00 → 2019-06-05 15:00 (+8d) | 20.2d? → 26.2d? | 60% → 66% | 227d → 221d |  |
| 167 | Zona do Chefe | 2019-05-03 09:00 → 2019-05-31 12:30 A (+28d) | 2019-05-03 15:00 → 2019-06-05 15:00 A (+33d) |  | 0% → 100% | 244.6d → none | constraint none → start no earlier than 2019-05-31 12:30 |

## Version 14 (saved 2019-06-07)

Note of the change: implementado carapaça

Last finish stays 2020-04-20. Complete tasks 141 → 143.

Changed:

| ID | Task | Start | Finish | Duration | Complete | Total float | Other |
| --- | --- | --- | --- | --- | --- | --- | --- |
| 27 | **Desenvolvimento** |  |  |  | 34% → 35% |  |  |
| 135 | **Área 2** |  |  |  | 71% → 77% |  |  |
| 151 | **Construção do Cenario** |  | 2019-06-05 15:00 → 2019-06-07 15:00 (+2d) | 26.2d? → 28.2d? | 66% → 77% | 221d → 219d |  |
| 168 | Área de itens pós chefe | 2019-05-03 09:00 → 2019-06-07 09:00 A (+35d) | 2019-05-03 15:00 → 2019-06-07 15:00 A (+35d) |  | 0% → 100% | 246.2d → none | constraint none → start no earlier than 2019-06-07 09:00 |
| 172 | Conexão de caminhos | 2019-05-03 09:00 → 2019-06-07 12:30 A (+35d) | 2019-05-03 15:00 → 2019-06-07 15:00 A (+35d) | 1d? → 0.5d? | 0% → 100% | 246.2d → none | constraint none → start no earlier than 2019-06-07 12:30 |

## Version 15 (saved 2019-06-18)

Note of the change: fazendo o text language converter

Last finish stays 2020-04-20. Complete tasks 143 → 152.

Changed:

| ID | Task | Start | Finish | Duration | Complete | Total float | Other |
| --- | --- | --- | --- | --- | --- | --- | --- |
| 7 | **Planejamento** |  | 2019-05-02 15:00 → 2019-06-18 15:00 (+47d) | 71.9d? → 107.1d? | 98% → 99% | 254.2d → 219d |  |
| 20 | **planejamento da Área 2** |  | 2019-05-02 15:00 → 2019-06-18 15:00 (+47d) | 0.5d? → 35.7d? | 75% → 94% | 254.2d → 219d |  |
| 22 | NPCs |  | 2019-05-02 15:00 → 2019-06-18 15:00 A (+47d) | 0.5d? → 1d? | 50% → 100% | 254.2d → none |  |
| 26 | Caminhos bloqueados por habilidades | 2019-05-02 12:30 A | 2019-05-02 15:00 → 2019-06-18 15:00 (+47d) | 0.5d? → 1d? | 0% → 75% | 252d → 219d |  |
| 27 | **Desenvolvimento** |  |  |  | 35% → 37% | 7d → 0d |  |
| 135 | **Área 2** |  |  |  | 77% → 100% |  |  |
| 136 | **implementação dos Inimigos** | 2019-05-03 09:00 A → 2019-05-09 09:00 A (+6d) | 2019-05-24 11:30 → 2019-06-18 11:30 A (+25d) | 16.1d? → 30.7d? | 77% → 100% | 231.1d → none |  |
| 145 | IX - Couraça nadadora | 2019-05-03 09:00 → 2019-06-18 09:00 A (+46d) | 2019-05-03 15:00 → 2019-06-18 11:30 A (+46d) | 1d? → 0.5d? | 0% → 100% | 246.2d → none | constraint none → start no earlier than 2019-06-18 09:00 |
| 146 | X - Couraça voadora | 2019-05-03 09:00 → 2019-06-18 09:00 A (+46d) | 2019-05-03 15:00 → 2019-06-18 11:30 A (+46d) | 1d? → 0.5d? | 0% → 100% | 246.2d → none | constraint none → start no earlier than 2019-06-18 09:00 |
| 149 | posicionamento e implementação de itens |  | 2019-05-17 15:00 A |  | 35% → 100% | 243.2d → none |  |
| 150 | Criação dos tiles e artes |  | 2019-05-22 11:30 → 2019-06-11 11:30 A (+20d) | 1d? → 1.5d? | 75% → 100% | 240.1d → none |  |
| 151 | **Construção do Cenario** |  | 2019-06-07 15:00 → 2019-06-18 11:30 A (+11d) | 28.2d? → 34.7d? | 77% → 100% | 219d → none |  |
| 169 | Desafio com Inimigos IX | 2019-05-03 09:00 → 2019-06-10 12:30 A (+38d) | 2019-05-03 15:00 → 2019-06-11 15:00 A (+39d) |  | 0% → 100% | 246.2d → none | constraint none → start no earlier than 2019-06-10 12:30 |
| 170 | Desafio com Inimigos X | 2019-05-03 09:00 → 2019-06-11 12:30 A (+39d) | 2019-05-03 15:00 → 2019-06-13 15:00 A (+41d) | 1d? → 1.5d? | 0% → 100% | 246.2d → none | constraint none → start no earlier than 2019-06-11 12:30 |
| 171 | Local de Itens subarea20 | 2019-05-03 09:00 → 2019-06-14 09:00 A (+42d) | 2019-05-03 15:00 → 2019-06-14 11:30 A (+42d) | 1d? → 0.5d? | 0% → 100% | 246.2d → none | constraint none → start no earlier than 2019-06-14 09:00 |
| 173 | Desafio das escadas multicoloridas | 2019-05-03 09:00 → 2019-06-14 09:00 A (+42d) | 2019-05-03 15:00 → 2019-06-18 11:30 A (+46d) | 1d? → 1.5d? | 0% → 100% | 246.2d → none | constraint none → start no earlier than 2019-06-14 09:00 |
